# 4662/4663 CFe拓展坞 DVT阶段

Schedule from a web Gantt chart, 2024-08-07 to 2024-11-14.
Saturdays and Sundays are off

## Schedule

| ID | WBS | Task | Duration | Start | Finish | Predecessors | Complete | inPeople | Status |
| --- | --- | --- | --- | --- | --- | --- | --- | --- | --- |
| 2 | 1 | 供应商完成样品预扫 | 1d | 2024-08-07 | 2024-08-07 |  | 100% | 供应商 | done |
| 3 | 2 | 打样第二版PCBＡ样品 | 13d | 2024-08-08 | 2024-08-26 | 2 |  | 供应商 |  |
| 4 | 3 | 第二版样品验收测试 | 8d | 2024-08-27 | 2024-09-05 | 3 |  | 测试 | waiting |
| 5 | 4 | 电子料备料 | 14d | 2024-09-06 | 2024-09-25 | 4 |  | 供应商 | waiting |
| 6 | 5 | 外观评审 | 2d | 2024-08-27 | 2024-08-28 | 3 |  | 项目组 | waiting |
| 7 | 6 | 开模前样品评审 | 1d | 2024-08-29 | 2024-08-29 | 6 |  | 项目组 | waiting |
| 8 | 7 | 开模 T0 样 | 28d | 2024-08-30 | 2024-10-08 | 7 |  | 供应商 | waiting |
| 9 | 8 | PCBA贴片 T0 | 9d | 2024-09-26 | 2024-10-08 | 5 |  | 供应商 | waiting |
| 10 | 9 | 试产样 质量验收测试 | 11d | 2024-10-09 | 2024-10-23 | 8, 9 |  | 质量 | waiting |
| 11 | 10 | 产前样签样 | 1d | 2024-10-24 | 2024-10-24 | 10 |  | 项目组 | waiting |
| 12 | 11 | 结构物料配齐 | 11d | 2024-10-25 | 2024-11-08 | 11 |  | 项目组 | waiting |
| 13 | 12 | 包装制作 | 6d | 2024-10-25 | 2024-11-01 | 11, 19 |  | 包装 | waiting |
| 14 | 13 | 首批量产 | 1d | 2024-11-11 | 2024-11-11 | 12, 13 |  | 供应商 | waiting |
| 15 | 14 | 成品入仓 | 3d | 2024-11-12 | 2024-11-14 | 14 |  | 项目 | waiting |
| 16 | 15 | 渲染需求 | 2d | 2024-08-29 | 2024-08-30 | 6 |  | 产品 | waiting |
| 17 | 16 | 完成主图拍摄渲染 | 4d | 2024-09-02 | 2024-09-05 | 16 |  | 渲染 | waiting |
| 18 | 17 | 包装说明书设计 | 7d | 2024-09-06 | 2024-09-16 | 17 |  | 包装 | waiting |
| 19 | 18 | 包装说明书打样 | 5d | 2024-09-17 | 2024-09-23 | 18 |  | 包装 | waiting |
| 20 | 19 | 输出完整报价，定价定量资料 | 2d | 2024-09-24 | 2024-09-25 | 19, 24 |  | 产品 | waiting |
| 21 | 20 | 完成定价审批 | 1d | 2024-09-26 | 2024-09-26 | 20 |  | 产品 | waiting |
| 22 | 21 | 各区域认证费用确认 | 3d | 2024-09-17 | 2024-09-19 |  |  | 认证 |  |
| 23 | 22 | 卖点宣讲会 | 1d | 2024-09-27 | 2024-09-27 | 21 |  | 产品 | waiting |
| 24 | 23 | 确认各区域销售ＭＯＱ | 1d | 2024-09-20 | 2024-09-20 | 22 |  | 销售 | waiting |
| 25 | 24 | 销售区域确认 | 1d | 2024-09-30 | 2024-09-30 | 23, 24 |  | 销售 | waiting |
| 26 | 25 | 产品中英文案 | 5d | 2024-08-30 | 2024-09-05 | 7 |  | 产品 | waiting |
| 27 | 26 | 中台信息录入 | 1d | 2024-09-06 | 2024-09-06 | 26 |  | 市场 | waiting |
| 28 | 27 | 中、美、欧、英、加，认证 | 20d | 2024-08-29 | 2024-09-25 | 6 |  | 认证 | waiting |
| 29 | 28 | 补充地区认证 | 10d | 2024-10-01 | 2024-10-14 | 25 |  | 认证 | waiting |
| 30 | 29 | 说明书文案 | 2d | 2024-08-07 | 2024-08-08 |  |  |  |  |

Notes:
- 3: 8/15更新：10--->13工作日。
- 4: 8/15更新：2--->8工作日。
- 5: 8/15更新：由8/8开始更新为质量测试完成后，开始备料。10--->14工作日。
- 6: 8/15新增
- 8: 8/15更新：11--->28工作日，由于国庆假期
- 9: 8/15更新：10--->8工作日。开始时间由9/13号，更新到电子备料完成后。
- 10: 8/15更新：质量测试时间4-->11
- 12: 8/15新增
- 14: 8/15更新：11-->1
